# 1

Schedule from MS Project, 2019-02-05 to 2019-10-24, status date 2019-02-28, costs in $, A marks actual dates.
Home (Personal)

## Calendars

- MIST: Mon-Thu 08:00-12:00, 13:00-17:00; Fri-Sat off; Sun 08:00-12:00, 13:00-17:00. Exceptions (off unless hours are given): 2019-03-17 (Birthday of Father of the Nation), 2019-03-22 to 2019-03-30 (Mid Term Break), 2019-04-04 (Shob-E-Meraj), 2019-04-14 (Bangla Noboborsho), 2019-04-21 (Shab-E-Barat), 2019-05-01 (May Day), 2019-05-17 to 2019-06-01 (PL), 2019-06-02 to 2019-06-08 (Eid Leave), 2019-06-09 to 2019-06-30 (Term-1 Exam), 2019-07-01 to 2019-07-06 (Term Break), 2019-08-09 to 2019-08-17 (Eid Leave), 2019-08-23 (Janmastomi), 2019-08-30 to 2019-09-07 (Mid Term Break), 2019-09-10 (Ashura), 2019-10-08 (Durga Puja), 2019-10-23 (Akheri Charar Somba).

## Resources

| Resource | Group | Unit | Rate |
| --- | --- | --- | --- |
| Maj Sajjad | HW |  | 400 |
| Maj Shamim | SW |  | 400 |
| Maj Reaz | HW |  | 400 |
| Akash Poddar | HW |  | 400 |
| Shahriar Kabir Tarafder | SW |  | 400 |
| Shahriar Iqbal | SW |  | 400 |
| Stepper Motor |  | Motor |  |
| Zeroing Tools |  | Zeroing Tool |  |
| Transport |  |  |  |

## Schedule

| ID | WBS | Task | Type | Duration | Start | Finish | Predecessors | Complete | Remaining | Total slack | Free slack | Constraint | Resources | Work | Actual work | Cost | Actual cost |
| --- | --- | --- | --- | --- | --- | --- | --- | --- | --- | --- | --- | --- | --- | --- | --- | --- | --- |
| 1 | 1 | **Weapon Zeroing & Warriors' Range Efficiency Analysis System for BD Army** |  | 130d | 2019-02-05 | 2019-10-24 |  | 14% |  |  |  |  | Akash Poddar; Maj Reaz; Maj Sajjad; Maj Shamim; Shahriar Iqbal; Shahriar Kabir Tarafder | 9392h | 530h | 3,791,200 | 217,000 |
| 2 | 1.1 | **Idea** |  | 10d | 2019-02-05 A | 2019-02-18 A |  | 100% |  |  |  |  |  | 152h | 152h | 61,000 | 61,000 |
| 3 | 1.1.1 | Information Gathering |  | 1d? | 2019-02-05 A | 2019-02-05 A |  | 100% |  |  |  |  | Akash Poddar; Maj Reaz; Maj Sajjad; Maj Shamim; Shahriar Iqbal; Shahriar Kabir Tarafder | 48h | 48h | 20,400 | 20,400 |
| 4 | 1.1.2 | Determine Project Ideas |  | 1d? | 2019-02-06 A | 2019-02-06 A | 3 | 100% |  |  |  | start no earlier than 2019-02-06 | Akash Poddar; Maj Sajjad | 16h | 16h | 6,800 | 6,800 |
| 5 | 1.1.3 | Project Idea Submission |  | 1d? | 2019-02-06 A | 2019-02-06 A | 4 | 100% |  |  |  | start no earlier than 2019-02-07 | Maj Reaz; Maj Shamim | 16h | 16h | 6,800 | 6,800 |
| 6 | 1.1.4 | Study Details Of the Idea |  | 1d? | 2019-02-07 A | 2019-02-09 A | 5 | 100% |  |  |  | finish no earlier than 2019-02-09 |  |  |  |  |  |
| 7 | 1.1.5 | Detail Idea Submission |  | 2d | 2019-02-08 A | 2019-02-11 A | 6 | 100% |  |  |  | finish no earlier than 2019-02-11 | Maj Reaz; Shahriar Iqbal | 32h | 32h | 13,200 | 13,200 |
| 8 | 1.1.6 | Initial Approval |  | 1d? | 2019-02-12 A | 2019-02-12 A | 7 | 100% |  |  |  | finish no earlier than 2019-02-12 | Maj Reaz; Maj Shamim | 16h | 16h | 6,800 | 6,800 |
| 9 | 1.1.7 | Project Scheduling |  | 1d? | 2019-02-12 A | 2019-02-13 A | 8 | 100% |  |  |  | finish no earlier than 2019-02-13 |  |  |  |  |  |
| 10 | 1.1.8 | Idea Approval |  | 1d? | 2019-02-13 A | 2019-02-14 A | 9 | 100% |  |  |  | finish no earlier than 2019-02-14 | Shahriar Iqbal; Shahriar Kabir Tarafder | 16h | 16h | 6,800 | 6,800 |
| 11 | 1.1.9 | Final Project Scheduling |  | 1d? | 2019-02-15 A | 2019-02-17 A | 10 | 100% |  |  |  | finish no earlier than 2019-02-17 | Maj Sajjad; Maj Reaz | 8h | 8h | 200 | 200 |
| 12 | 1.1.10 | Idea Selection Complete | milestone | 0d | 2019-02-18 A | 2019-02-18 A | 11 | 100% |  |  |  | start no earlier than 2019-02-18 |  |  |  |  |  |
| 13 | 1.2 | **Analysis Requirement** |  | 7d | 2019-02-19 A | 2019-02-27 A |  | 100% |  |  |  |  |  | 96h | 96h | 41,400 | 41,400 |
| 14 | 1.2.1 | Conduct needs analysis |  | 1d? | 2019-02-19 A | 2019-02-19 A |  | 100% |  |  |  |  | Maj Shamim; Maj Sajjad | 8h | 8h | 3,600 | 3,600 |
| 15 | 1.2.2 | Draft Preliminary Software Specifications |  | 1d? | 2019-02-20 A | 2019-02-20 A |  | 100% |  |  |  |  |  |  |  |  |  |
| 16 | 1.2.3 | Draft Preliminary Hardware Specifications |  | 1d? | 2019-02-21 A | 2019-02-21 A |  | 100% |  |  |  |  |  |  |  |  |  |
| 17 | 1.2.4 | Develop Preliminary Budget |  | 1d? | 2019-02-24 A | 2019-02-24 A |  | 100% |  |  |  |  | Akash Poddar; Maj Sajjad; Maj Shamim | 8h | 8h | 3,800 | 3,800 |
| 18 | 1.2.5 | Review Specifications/Budget |  | 1d? | 2019-02-25 A | 2019-02-25 A |  | 100% |  |  |  |  | Maj Sajjad; Maj Shamim | 16h | 16h | 6,800 | 6,800 |
| 19 | 1.2.6 | Incorporate feedback on software specifications |  | 1d? | 2019-02-26 A | 2019-02-26 A | 15 | 100% |  |  |  |  |  |  |  |  |  |
| 20 | 1.2.7 | Incorporate feedback on hardware specifications |  | 1d? | 2019-02-22 A | 2019-02-24 A | 16 | 100% |  |  |  |  | Akash Poddar; Maj Reaz; Maj Sajjad; Maj Shamim; Shahriar Iqbal; Shahriar Kabir Tarafder | 48h | 48h | 20,400 | 20,400 |
| 21 | 1.2.8 | Develop Submission timeline |  | 1d? | 2019-02-25 A | 2019-02-25 A |  | 100% |  |  |  |  | Maj Reaz; Maj Sajjad | 16h | 16h | 6,800 | 6,800 |
| 22 | 1.2.9 | Concept Approval |  | 1d? | 2019-02-26 A | 2019-02-26 A |  | 100% |  |  |  |  |  |  |  |  |  |
| 23 | 1.2.10 | Analysis complete | milestone | 0d | 2019-02-27 A | 2019-02-27 A | 12 | 100% |  |  |  | finish no earlier than 2019-02-27 |  |  |  |  |  |
| 24 | 1.3 | **Design** |  | 15d | 2019-02-28 A | 2019-03-21 |  | 34% | 9.91d |  |  |  |  | 128h | 42h | 52,800 | 17,600 |
| 25 | 1.3.1 | Review Preliminary Software Specification |  | 3d | 2019-02-28 A | 2019-03-04 | 23 | 50% | 1.5d | 1.5d | 0d |  | Shahriar Iqbal; Shahriar Kabir Tarafder | 48h | 24h | 19,600 | 10,000 |
| 26 | 1.3.2 | Review Preliminary Hardware Specification |  | 3d | 2019-03-05 A | 2019-03-07 | 25 | 50% | 1.5d | 1d | 0d | start no earlier than 2019-03-05 | Maj Shamim | 24h | 12h | 9,800 | 5,000 |
| 27 | 1.3.3 | Develop Functional Specification |  | 2d | 2019-03-10 A | 2019-03-11 | 26 | 50% | 1d | 0.75d | 0d |  |  |  |  |  |  |
| 28 | 1.3.4 | Develop Prototype Based on Functional Specification |  | 3d | 2019-03-12 A | 2019-03-14 | 27 | 25% | 2.25d | 3d | 0d |  | Akash Poddar | 24h | 6h | 9,800 | 2,600 |
| 29 | 1.3.5 | Review Functional Specification |  | 1d | 2019-03-18 | 2019-03-18 | 28 |  |  | 3d | 0d |  | Akash Poddar; Maj Reaz; Maj Sajjad | 24h |  | 10,200 |  |
| 30 | 1.3.6 | Incorporate Feedback into Functional Specification |  | 1d | 2019-03-19 | 2019-03-19 | 29 |  |  | 99d | 0d | finish no earlier than 2019-03-19 |  |  |  |  |  |
| 31 | 1.3.7 | Obtain approval to Proceed |  | 1d? | 2019-03-20 | 2019-03-20 | 30 |  |  | 99d |  | finish no earlier than 2019-03-20 | Maj Sajjad | 8h |  | 3,400 |  |
| 32 | 1.3.8 | Design Complete | milestone | 0d | 2019-03-21 | 2019-03-21 |  |  |  | 55d | 0d | finish no earlier than 2019-03-21 |  |  |  |  |  |

| ID | WBS | Task | Duration | Start | Finish | Predecessors | Total slack | Free slack | Constraint | Resources | Work | Cost |
| --- | --- | --- | --- | --- | --- | --- | --- | --- | --- | --- | --- | --- |
| 33 | 1.4 | **Development** | 60d | 2019-03-31 | 2019-08-21 |  |  |  |  |  | 1040h | 433,600 |
| 34 | 1.4.1 | Review Functional Specifications | 2d | 2019-03-31 | 2019-04-01 | 32 | 55d | 0d |  | Shahriar Iqbal | 16h | 6,600 |
| 35 | 1.4.2 | Identify Design Parameters | 1d? | 2019-04-02 | 2019-04-02 | 34 | 55d | 0d |  | Maj Reaz | 8h | 3,400 |
| 36 | 1.4.3 | Assign development staff | 1d? | 2019-04-03 | 2019-04-03 | 35 | 55d | 0d |  |  |  |  |
| 37 | 1.4.4 | Buy Components | 1d? | 2019-04-07 | 2019-04-07 | 36 | 55d |  |  | Stepper Motor [1 Motor]; Transport [0.1%]; Zeroing Tools [1 Zeroing Tool] |  | 8,000 |
| 38 | 1.4.5 | **Zeroing Tools** | 18d | 2019-04-07 | 2019-05-05 |  |  |  |  |  | 248h | 100,800 |
| 39 | 1.4.5.1 | Making Dice and Adjusting screws | 5d | 2019-04-07 | 2019-04-11 |  | 3d |  |  | Maj Sajjad | 40h | 16,200 |
| 40 | 1.4.5.2 | Attaching Gear with Screws | 4d | 2019-04-11 | 2019-04-17 |  | 86d |  | start no earlier than 2019-04-11 | Maj Sajjad; Maj Shamim | 64h | 26,000 |
| 41 | 1.4.5.3 | Check feasibility of the method | 1d? | 2019-04-18 | 2019-04-18 | 39 | 0d |  | start no earlier than 2019-04-18 | Maj Sajjad | 8h | 3,400 |
| 42 | 1.4.5.4 | Making Base for holding weapon | 4d | 2019-04-22 | 2019-04-25 | 41 | 0d |  |  | Maj Reaz; Maj Sajjad; Maj Shamim | 96h | 39,000 |
| 43 | 1.4.5.5 | Making Front Sight base for Stepper Motors | 5d | 2019-04-28 | 2019-05-05 | 42 | 0d |  |  | Maj Sajjad | 40h | 16,200 |
| 44 | 1.4.6 | **Stepper Motor** | 7d | 2019-05-06 | 2019-05-14 |  |  |  |  |  | 120h | 49,600 |
| 45 | 1.4.6.1 | Rotating Motor | 1d? | 2019-05-06 | 2019-05-06 | 43 | 0d |  |  | Shahriar Iqbal; Shahriar Kabir Tarafder | 16h | 6,800 |
| 46 | 1.4.6.2 | Use of degree and rotating upto specific turn | 3d | 2019-05-07 | 2019-05-09 | 45 | 0d |  |  | Maj Reaz; Maj Shamim | 48h | 19,600 |
| 47 | 1.4.6.3 | Generating required torque and testing | 1d? | 2019-05-12 | 2019-05-12 | 46 | 0d |  |  | Akash Poddar | 8h | 3,400 |
| 48 | 1.4.6.4 | Fixing the motors with the zeroing base | 2d | 2019-05-13 | 2019-05-14 | 47 | 0d |  |  | Maj Reaz; Maj Sajjad; Maj Shamim | 48h | 19,800 |
| 49 | 1.4.7 | **Interfacing** | 5d | 2019-05-15 | 2019-07-09 |  |  |  |  |  | 40h | 16,400 |
| 50 | 1.4.7.1 | Setting up Arduino UNO | 1d? | 2019-05-15 | 2019-05-15 | 48 | 0d |  |  | Shahriar Kabir Tarafder | 8h | 3,400 |
| 51 | 1.4.7.2 | Connecting and Configuring Motor drivers with arduino | 4d | 2019-05-16 | 2019-07-09 | 50 | 0d |  |  | Maj Reaz | 32h | 13,000 |
| 52 | 1.4.8 | **Camera and Display** | 2d | 2019-07-10 | 2019-07-11 |  |  |  |  |  | 16h | 6,800 |
| 53 | 1.4.8.1 | Focus Camera on target | 1d? | 2019-07-10 | 2019-07-10 | 51 | 1d | 0d |  | Maj Shamim | 8h | 3,400 |
| 54 | 1.4.8.2 | View on Monitor and necessary adjustment | 1d? | 2019-07-11 | 2019-07-11 | 53 | 62d |  | start no earlier than 2019-04-01 | Maj Shamim | 8h | 3,400 |
| 55 | 1.4.9 | **Android Apps Development** | 31d | 2019-04-21 | 2019-07-22 |  |  |  |  |  | 416h | 168,800 |
| 56 | 1.4.9.1 | Study on Image Processing | 4d | 2019-04-22 | 2019-04-27 |  | 55d | 0d | finish no earlier than 2019-04-27 | Akash Poddar; Maj Sajjad | 64h | 26,000 |
| 57 | 1.4.9.2 | Working with Open CV | 2d | 2019-04-28 | 2019-04-29 | 56 | 55d | 0d | finish no earlier than 2019-04-29 | Akash Poddar; Maj Shamim | 32h | 13,200 |
| 58 | 1.4.9.3 | Taking Live Snap of the Target | 1d? | 2019-04-30 | 2019-05-01 | 57 | 55d | 0d | finish no earlier than 2019-05-01 |  |  |  |
| 59 | 1.4.9.4 | Taking Snap from the monitor and adjustments | 1d? | 2019-05-02 | 2019-05-04 | 58 | 55d | 0d | finish no earlier than 2019-05-04 |  |  |  |
| 60 | 1.4.9.5 | Detecting Bullet Impression | 7d | 2019-05-05 | 2019-05-13 | 59 | 55d | 0d | finish no earlier than 2019-05-13 |  |  |  |
| 61 | 1.4.9.6 | Calculating MPI | 7d | 2019-05-14 | 2019-07-10 | 60 | 55d | 0d | finish no earlier than 2019-07-10 | Maj Reaz; Maj Sajjad; Shahriar Kabir Tarafder | 168h | 67,800 |
| 62 | 1.4.9.7 | Error Definition | 5d | 2019-07-11 | 2019-07-17 | 61 | 55d | 0d | finish no earlier than 2019-07-17 | Maj Reaz; Shahriar Kabir Tarafder | 80h | 32,400 |
| 63 | 1.4.9.8 | Error Correction Mechanisms | 3d | 2019-07-18 | 2019-07-22 | 62 | 55d |  | finish no earlier than 2019-07-22 | Maj Reaz; Maj Sajjad; Maj Shamim | 72h | 29,400 |

| ID | WBS | Task | Type | Duration | Start | Finish | Predecessors | Total slack | Free slack | Constraint | Resources | Work | Cost |
| --- | --- | --- | --- | --- | --- | --- | --- | --- | --- | --- | --- | --- | --- |
| 64 | 1.4.10 | **Web Application** |  | 15d | 2019-07-23 | 2019-08-19 |  |  |  |  |  | 136h | 55,600 |
| 65 | 1.4.10.1 | Web Server Deployment |  | 3d? | 2019-07-23 | 2019-07-27 |  | 40d | 0d | finish no earlier than 2019-07-27 | Shahriar Kabir Tarafder | 24h | 9,800 |
| 66 | 1.4.10.2 | UI Design |  | 4d | 2019-07-28 | 2019-07-31 | 65 | 40d | 0d | finish no earlier than 2019-07-31 | Akash Poddar; Shahriar Iqbal; Shahriar Kabir Tarafder | 96h | 39,000 |
| 67 | 1.4.10.3 | Database Integration |  | 3d | 2019-08-01 | 2019-08-05 | 66 | 40d | 0d | finish no earlier than 2019-08-05 |  |  |  |
| 68 | 1.4.10.4 | User Creation |  | 1d? | 2019-08-06 | 2019-08-06 | 67 | 40d | 0d | finish no earlier than 2019-08-06 | Akash Poddar; Shahriar Iqbal | 16h | 6,800 |
| 69 | 1.4.10.5 | User Data Entry |  | 4d | 2019-08-07 | 2019-08-19 | 68 | 40d |  | finish no earlier than 2019-08-19 |  |  |  |
| 70 | 1.4.11 | Final Intigration |  | 1d? | 2019-08-20 | 2019-08-20 |  | 39d |  | finish no earlier than 2019-08-20 | Akash Poddar; Maj Reaz; Maj Sajjad; Maj Shamim; Shahriar Kabir Tarafder | 40h | 17,000 |
| 71 | 1.4.12 | Development Complete | milestone | 0d | 2019-08-21 | 2019-08-21 |  | 38d |  | finish no earlier than 2019-08-21 | Maj Reaz; Maj Sajjad; Maj Shamim |  | 600 |
| 72 | 1.5 | **Testing** |  | 10d | 2019-08-22 | 2019-09-12 |  |  |  |  |  | 112h | 46,800 |
| 73 | 1.5.1 | Testing Plan |  | 1d | 2019-08-22 | 2019-08-22 |  | 2d | 0d |  | Maj Sajjad; Maj Shamim | 16h | 6,800 |
| 74 | 1.5.2 | Testing Image Processign |  | 1d? | 2019-08-25 | 2019-08-25 | 73 | 2d | 0d |  | Akash Poddar; Maj Shamim | 16h | 6,800 |
| 75 | 1.5.3 | Testing various Function of the apps |  | 1d? | 2019-08-26 | 2019-08-26 | 74 | 2d | 0d |  | Maj Shamim | 8h | 3,400 |
| 76 | 1.5.4 | Overall Intigration |  | 1d? | 2019-08-27 | 2019-08-27 | 75 | 2d | 0d |  | Maj Reaz | 8h | 3,400 |
| 77 | 1.5.5 | Testing Web Application |  | 1d? | 2019-08-28 | 2019-08-28 | 76 | 2d | 0d |  | Shahriar Iqbal; Shahriar Kabir Tarafder | 16h | 6,800 |
| 78 | 1.5.6 | Detail Testing of the Fuctioning of Motors |  | 3d | 2019-08-29 | 2019-09-09 | 77 | 2d | 0d |  | Akash Poddar; Maj Reaz | 48h | 19,600 |
| 79 | 1.5.7 | Final testing |  | 1d? | 2019-09-11 | 2019-09-11 | 78 | 4d | 1d | finish no earlier than 2019-09-11 |  |  |  |
| 80 | 1.5.8 | Testing Complete | milestone | 0d | 2019-09-12 | 2019-09-12 | 79 | 3d | 0d | finish no earlier than 2019-09-12 |  |  |  |
| 81 | 1.6 | **Training** |  | 7d | 2019-09-13 | 2019-09-22 |  |  |  |  |  | 32h | 13,800 |
| 82 | 1.6.1 | Develop Training Delivery Mechanism |  | 1d? | 2019-09-15 | 2019-09-15 | 80 | 3d | 0d |  | Akash Poddar | 8h | 3,400 |
| 83 | 1.6.2 | Develop training specifications for end users |  | 1d? | 2019-09-16 | 2019-09-16 | 82 | 3d | 0d |  | Maj Shamim | 8h | 3,400 |
| 84 | 1.6.3 | Identify training delivery methodology (computer based training, classroom, etc.) |  | 1d? | 2019-09-17 | 2019-09-17 | 83 | 3d |  |  | Maj Reaz | 8h | 3,400 |
| 85 | 1.6.4 | Develop Training Materials |  | 3d | 2019-09-16 | 2019-09-18 | 86 | 0d |  |  |  |  |  |
| 86 | 1.6.5 | Conduct Training Usability Study |  | 1d? | 2019-09-15 | 2019-09-15 |  | 0d |  |  | Shahriar Iqbal | 8h | 3,400 |
| 87 | 1.6.6 | Finalize Training Materials |  | 2d? | 2019-09-19 | 2019-09-22 | 85 | 0d |  |  |  |  |  |
| 88 | 1.6.7 | Training Materials Complete | milestone | 0d | 2019-09-22 | 2019-09-22 | 82 | 22d |  | finish no earlier than 2019-09-22 | Maj Shamim |  | 200 |

| ID | WBS | Task | Type | Duration | Start | Finish | Predecessors | Complete | Remaining | Total slack | Free slack | Constraint | Resources | Work | Actual work | Cost | Actual cost |
| --- | --- | --- | --- | --- | --- | --- | --- | --- | --- | --- | --- | --- | --- | --- | --- | --- | --- |
| 89 | 1.7 | **Documentation** |  | 97d | 2019-02-27 A | 2019-09-29 |  | 11% | 86.38d |  |  |  |  | 1336h | 240h | 537,600 | 97,000 |
| 90 | 1.7.1 | **SRS Content Distribution** |  | 79d | 2019-02-27 A | 2019-08-26 |  | 13% | 68.56d |  |  |  |  | 1192h | 240h | 478,800 | 97,000 |
| 91 | 1.7.1.1 | Introduction |  | 11d | 2019-02-27 A | 2019-03-13 |  | 64% | 4d | 103d |  | start no earlier than 2019-02-27 | Akash Poddar; Maj Reaz; Maj Sajjad | 264h | 168h | 106,200 | 67,800 |
| 92 | 1.7.1.2 | Overall Description |  | 6d | 2019-03-13 A | 2019-03-21 |  | 75% | 1.5d | 35d | 0d | finish no earlier than 2019-03-21 | Maj Reaz; Shahriar Kabir Tarafder | 96h | 72h | 38,800 | 29,200 |
| 93 | 1.7.1.3 | Specific Requirements |  | 28d | 2019-03-31 | 2019-05-13 | 92 |  |  | 35d | 1d |  | Akash Poddar; Maj Sajjad; Maj Shamim | 672h |  | 269,400 |  |
| 94 | 1.7.1.4 | Change Management Process |  | 22d | 2019-05-15 | 2019-08-03 | 93 |  |  | 39d | 0d | finish no earlier than 2019-08-03 |  |  |  |  |  |
| 95 | 1.7.1.5 | Document Approval |  | 8d | 2019-08-04 | 2019-08-20 | 94 |  |  | 39d |  | finish no earlier than 2019-08-20 | Maj Reaz | 64h |  | 25,800 |  |
| 96 | 1.7.1.6 | Supporting Information |  | 12d | 2019-08-04 | 2019-08-26 |  |  |  | 35d |  | finish no earlier than 2019-08-26 | Shahriar Iqbal | 96h |  | 38,600 |  |
| 97 | 1.7.2 | Develop Help system |  | 3d | 2019-08-26 | 2019-08-28 |  |  |  | 18d | 0d | finish no earlier than 2019-08-28 | Maj Shamim | 24h |  | 9,800 |  |
| 98 | 1.7.3 | Review Help Documentation |  | 2d | 2019-08-29 | 2019-09-08 | 97 |  |  | 18d | 0d | finish no earlier than 2019-09-08 | Shahriar Kabir Tarafder | 16h |  | 6,600 |  |
| 99 | 1.7.4 | Develop User Manuals Specifications |  | 2d | 2019-09-09 | 2019-09-11 | 98 |  |  | 18d | 0d | finish no earlier than 2019-09-11 | Maj Sajjad | 16h |  | 6,600 |  |
| 100 | 1.7.5 | Develop User Manuals |  | 4d | 2019-09-12 | 2019-09-17 | 99 |  |  | 18d | 0d | finish no earlier than 2019-09-17 | Maj Reaz | 32h |  | 13,000 |  |
| 101 | 1.7.6 | Review all user documentation |  | 4d | 2019-09-18 | 2019-09-23 | 100 |  |  | 18d | 0d | finish no earlier than 2019-09-23 | Shahriar Iqbal | 32h |  | 13,000 |  |
| 102 | 1.7.7 | Incorporate user documentation feedback |  | 3d | 2019-09-24 | 2019-09-26 | 101 |  |  | 18d | 1d | finish no earlier than 2019-09-26 | Akash Poddar | 24h |  | 9,800 |  |
| 103 | 1.7.8 | Documentation complete | milestone | 0d | 2019-09-29 | 2019-09-29 | 102 |  |  | 17d |  | finish no earlier than 2019-09-29 |  |  |  |  |  |
| 104 | 1.8 | **Deployment** |  | 12d | 2019-09-30 | 2019-10-16 |  |  |  |  |  |  |  | 184h |  | 75,600 |  |
| 105 | 1.8.1 | Determine Final Deployment Strategy |  | 2d | 2019-09-30 | 2019-10-01 |  |  |  | 9d | 0d |  | Akash Poddar; Maj Shamim; Shahriar Iqbal | 48h |  | 19,800 |  |
| 106 | 1.8.2 | Develop Deployment Methodology |  | 1d? | 2019-10-02 | 2019-10-02 | 105 |  |  | 9d | 0d |  | Maj Reaz; Maj Sajjad; Maj Shamim | 24h |  | 10,200 |  |
| 107 | 1.8.3 | Secure Deployment Resources |  | 2d | 2019-10-03 | 2019-10-06 | 106 |  |  | 12d |  | finish no earlier than 2019-10-03 |  |  |  |  |  |
| 108 | 1.8.4 | Train Support Staff |  | 4d | 2019-10-07 | 2019-10-13 |  |  |  | 8d | 3d | finish no earlier than 2019-10-13 | Akash Poddar; Shahriar Iqbal; Shahriar Kabir Tarafder | 96h |  | 39,000 |  |
| 109 | 1.8.5 | Deploy Software |  | 2d | 2019-10-14 | 2019-10-15 |  |  |  | 6d | 1d | finish no earlier than 2019-10-15 | Shahriar Kabir Tarafder | 16h |  | 6,600 |  |
| 110 | 1.8.6 | Deployment complete | milestone | 0d | 2019-10-16 | 2019-10-16 | 109, 108 |  |  | 5d |  | finish no earlier than 2019-10-16 |  |  |  |  |  |
| 111 | 1.9 | **Post Implement Review** |  | 5d | 2019-10-17 | 2019-10-24 |  |  |  |  |  |  |  | 72h |  | 31,400 |  |
| 112 | 1.9.1 | Document Lessons Learned |  | 1d? | 2019-10-17 | 2019-10-17 |  |  |  | 3d | 0d |  | Akash Poddar; Maj Reaz; Maj Shamim | 24h |  | 10,200 |  |
| 113 | 1.9.2 | Distribute to team members |  | 1d? | 2019-10-20 | 2019-10-20 | 112 |  |  | 3d |  |  | Maj Sajjad; Shahriar Iqbal | 16h |  | 6,800 |  |
| 114 | 1.9.3 | Create Software Maintenance Team |  | 3d | 2019-10-17 | 2019-10-21 |  |  |  | 1d | 0d |  | Shahriar Kabir Tarafder | 24h |  | 9,800 |  |
| 115 | 1.9.4 | Post Implementation Review Complete |  | 1d? | 2019-10-22 | 2019-10-22 | 114 |  |  | 1d |  | start no earlier than 2019-10-22 | Maj Shamim | 8h |  | 3,400 |  |
| 116 | 1.9.5 | Complete Project | milestone | 0d | 2019-10-24 | 2019-10-24 | 115 |  |  | 0d |  | finish no earlier than 2019-10-24 | Akash Poddar; Maj Reaz; Maj Sajjad; Maj Shamim; Shahriar Iqbal; Shahriar Kabir Tarafder |  |  | 1,200 |  |
